# EMP

Schedule from MS Project, 2011-12-29 to 2012-03-02.

## Calendars

- Standard: Mon-Fri 08:00-12:00, 13:00-17:00; Sat-Sun off. Exceptions (off unless hours are given): 2012-01-02 to 2012-01-03, 2012-01-21 08:00-12:00, 13:00-17:00, 2012-01-23 to 2012-01-27, 2012-01-29 08:00-12:00, 13:00-17:00.

## Resources

| Resource |
| --- |
| KK |
| Animax |
| Wing |
| Hay |

## Schedule

| ID | WBS | Task | Duration | Start | Finish | Predecessors | Total slack | Free slack | Constraint | Resources | Work |
| --- | --- | --- | --- | --- | --- | --- | --- | --- | --- | --- | --- |
| 1 | 1 | Database Design | 3d | 2011-12-30 | 2012-01-05 |  | 36d |  | start no earlier than 2011-12-30 | Animax | 24h |
| 2 | 2 | **Web site** | 39d? | 2011-12-30 | 2012-02-29 |  | 2d |  |  |  | 336h |
| 3 | 2.1 | **Admin** | 39d | 2011-12-30 | 2012-02-29 |  | 2d |  |  |  | 24h |
| 4 | 2.1.1 | App Management | 2d | 2012-02-28 | 2012-02-29 | 12 | 2d |  | start no earlier than 2011-12-30 | Wing | 16h |
| 5 | 2.1.2 | User Management | 1d | 2011-12-30 | 2011-12-30 |  | 2d | 0d | start no earlier than 2011-12-30 | Animax | 8h |
| 6 | 2.2 | **Client** | 38d? | 2012-01-04 | 2012-02-29 |  | 2d |  |  |  | 312h |
| 7 | 2.2.1 | User Login | 1d? | 2012-01-04 | 2012-01-04 | 5 | 2d | 0d |  | Animax | 8h |
| 8 | 2.2.2 | **My App Management** | 38d? | 2012-01-04 | 2012-02-29 |  | 2d |  |  |  | 304h |
| 9 | 2.2.2.1 | Create/Edit Base Info | 2d | 2012-02-16 | 2012-02-17 | 31 | 2d | 0d |  | Wing | 16h |
| 10 | 2.2.2.2 | Create/Edit/Order Tab | 2d | 2012-02-20 | 2012-02-21 | 9 | 2d | 0d |  | Wing | 16h |
| 11 | 2.2.2.3 | Create/Edit Style | 3d | 2012-02-22 | 2012-02-24 | 10 | 2d | 0d |  | Wing | 24h |
| 12 | 2.2.2.4 | Review | 1d? | 2012-02-27 | 2012-02-27 | 11 | 2d | 0d |  | Wing | 8h |
| 13 | 2.2.2.5 | **Feature** | 38d | 2012-01-04 | 2012-02-29 |  | 2d |  |  |  | 240h |
| 14 | 2.2.2.5.1 | HTML View | 2d | 2012-01-04 | 2012-01-05 |  | 2d | 0d | start no earlier than 2012-01-04 | Hay | 16h |
| 15 | 2.2.2.5.2 | Photo gallery | 5d | 2012-01-06 | 2012-01-29 | 14 | 2d | 0d |  | Hay | 40h |
| 16 | 2.2.2.5.3 | Events | 3d | 2012-01-30 | 2012-02-01 | 15 | 2d | 0d |  | Hay | 24h |
| 17 | 2.2.2.5.4 | Videos | 5d | 2012-02-02 | 2012-02-08 | 16 | 2d | 0d |  | Hay | 40h |
| 18 | 2.2.2.5.5 | Download | 5d | 2012-02-09 | 2012-02-15 | 17 | 2d | 0d |  | Hay | 40h |
| 19 | 2.2.2.5.6 | Article | 3d | 2012-02-16 | 2012-02-20 | 18 | 2d | 0d |  | Hay | 24h |
| 20 | 2.2.2.5.7 | Form | 3d | 2012-02-21 | 2012-02-23 | 19 | 2d | 0d |  | Hay | 24h |
| 21 | 2.2.2.5.8 | Mail | 4d | 2012-02-24 | 2012-02-29 | 20 | 2d |  |  | Hay | 32h |
| 22 | 3 | **Web Servers** | 27d? | 2012-01-05 | 2012-02-15 |  | 2d |  |  |  | 176h |
| 23 | 3.1 | Base Info | 3d | 2012-01-05 | 2012-01-09 | 7 | 2d | 0d |  | Wing | 24h |
| 24 | 3.2 | HTML View | 1d? | 2012-01-10 | 2012-01-10 | 23 | 2d | 0d |  | Wing | 8h |
| 25 | 3.3 | Photo gallery | 3d | 2012-01-11 | 2012-01-13 | 24 | 2d | 0d |  | Wing | 24h |
| 26 | 3.4 | Events | 2d | 2012-01-16 | 2012-01-17 | 25 | 2d | 0d |  | Wing | 16h |
| 27 | 3.5 | Videos | 3d | 2012-01-18 | 2012-02-01 | 26 | 2d | 0d |  | Wing | 24h |
| 28 | 3.6 | Download | 3d | 2012-02-02 | 2012-02-06 | 27 | 2d | 0d |  | Wing | 24h |
| 29 | 3.7 | Article | 3d | 2012-02-07 | 2012-02-09 | 28 | 2d | 0d |  | Wing | 24h |
| 30 | 3.8 | Form | 2d | 2012-02-10 | 2012-02-13 | 29 | 2d | 0d |  | Wing | 16h |
| 31 | 3.9 | Mail | 2d | 2012-02-14 | 2012-02-15 | 30 | 2d | 0d |  | Wing | 16h |

| ID | WBS | Task | Duration | Start | Finish | Predecessors | Total slack | Resources | Work |
| --- | --- | --- | --- | --- | --- | --- | --- | --- | --- |
| 32 | 4 | **Android** | 42d | 2011-12-29 | 2012-03-02 |  | 0d |  | 336h |
| 33 | 4.1 | Navigation | 4d | 2011-12-29 | 2012-01-05 |  | 0d | KK | 32h |
| 34 | 4.2 | **Feature** | 38d | 2012-01-06 | 2012-03-02 |  | 0d |  | 304h |
| 35 | 4.2.1 | HTML View | 4d | 2012-01-06 | 2012-01-11 | 33 | 0d | KK | 32h |
| 36 | 4.2.2 | Photo gallery | 4d | 2012-01-12 | 2012-01-17 | 35 | 0d | KK | 32h |
| 37 | 4.2.3 | Events | 9d | 2012-01-18 | 2012-02-02 | 36 | 0d | KK | 72h |
| 38 | 4.2.4 | Videos | 3d | 2012-02-03 | 2012-02-07 | 37 | 0d | KK | 24h |
| 39 | 4.2.5 | Download | 5d | 2012-02-08 | 2012-02-14 | 38 | 0d | KK | 40h |
| 40 | 4.2.6 | Article | 4d | 2012-02-15 | 2012-02-20 | 39 | 0d | KK | 32h |
| 41 | 4.2.7 | Form | 4d | 2012-02-21 | 2012-02-24 | 40 | 0d | KK | 32h |
| 42 | 4.2.8 | Mail | 5d | 2012-02-27 | 2012-03-02 | 41 | 0d | KK | 40h |
